Schedule from MS Project, 2013-04-17 to 2013-06-18.
Lenovo

## Calendars

- 标准: Mon-Fri 08:00-12:00, 13:00-17:00; Sat-Sun off. Exceptions (off unless hours are given): 2013-05-04 to 2013-05-05 08:00-12:00, 13:00-17:00.

## Schedule

| ID | WBS | Task | Duration | Start | Finish | Predecessors | Total slack | Free slack | Constraint |
| --- | --- | --- | --- | --- | --- | --- | --- | --- | --- |
| 1 | 1 | **详细设计** | 6d | 2013-04-17 | 2013-04-24 |  | 41d |  |  |
| 2 | 1.1 | Service与manager接口 | 0.5d | 2013-04-17 | 2013-04-17 |  | 46d | 0d | start no earlier than 2013-04-17 |
| 3 | 1.2 | Service日志协议 | 0.5d | 2013-04-17 | 2013-04-17 | 2 | 9d |  |  |
| 4 | 1.3 | Service与监控通信协议与数据格式 | 0.5d | 2013-04-18 | 2013-04-18 |  | 41d | 0d | start no earlier than 2013-04-18 |
| 5 | 1.4 | 接入DSP的接口设计 | 0.5d | 2013-04-18 | 2013-04-18 | 4 | 41d | 0d |  |
| 6 | 1.5 | 程序设计 | 2d | 2013-04-19 | 2013-04-22 | 5 | 41d | 0d |  |
| 7 | 1.6 | Gmock调研 | 1d | 2013-04-23 | 2013-04-23 | 6 | 41d | 0d |  |
| 8 | 1.7 | 详细设计评审 | 1d | 2013-04-24 | 2013-04-24 | 7 | 41d |  |  |
| 9 | 2 | **代码开发** | 11d | 2013-04-25 | 2013-05-07 |  | 30d |  |  |
| 10 | 2.1 | SSPServer | 1d | 2013-04-25 | 2013-04-25 |  | 37d | 0d | start no earlier than 2013-04-25 |
| 11 | 2.2 | DspManagerTask | 1d | 2013-04-26 | 2013-04-26 | 10 | 37d | 0d |  |
| 12 | 2.3 | DspTransferTask | 2d | 2013-04-29 | 2013-04-30 | 11 | 37d |  |  |
| 13 | 2.4 | SSPWorkTreahds | 1d | 2013-05-04 | 2013-05-04 |  | 30d | 0d | start no earlier than 2013-05-04 |
| 14 | 2.5 | SSPLogClient | 1d | 2013-05-05 | 2013-05-05 | 13 | 30d | 0d | start no earlier than 2013-05-05 |
| 15 | 2.6 | SSPFluxRecord | 1d | 2013-05-06 | 2013-05-06 | 14 | 30d | 0d |  |
| 16 | 2.7 | DspRTBTask | 1d | 2013-05-07 | 2013-05-07 | 15 | 30d |  |  |
| 17 | 3 | **单元测试** | 5d | 2013-05-08 | 2013-05-14 |  | 25d |  |  |
| 18 | 3.1 | SSPServer测试 | 1d | 2013-05-08 | 2013-05-08 |  | 25d | 0d | start no earlier than 2013-05-08 |
| 19 | 3.2 | DspManagerTask测试 | 1d | 2013-05-09 | 2013-05-09 | 18 | 25d | 0d |  |
| 20 | 3.3 | DspTransferTask测试 | 1d | 2013-05-10 | 2013-05-10 | 19 | 25d | 0d |  |
| 21 | 3.4 | SSPWorkTreahds测试 | 0.5d | 2013-05-13 | 2013-05-13 | 20 | 25d | 0d |  |
| 22 | 3.5 | SSPLogClient测试 | 0.5d | 2013-05-13 | 2013-05-13 | 21 | 25d | 0d |  |
| 23 | 3.6 | SSPFluxRecord测试 | 0.5d | 2013-05-14 | 2013-05-14 | 22 | 25d | 0d |  |
| 24 | 3.7 | DspRTBTask测试 | 0.5d | 2013-05-14 | 2013-05-14 | 23 | 25d |  |  |

| ID | WBS | Task | Duration | Start | Finish | Predecessors | Total slack | Free slack | Constraint |
| --- | --- | --- | --- | --- | --- | --- | --- | --- | --- |
| 25 | 4 | **集成测试** | 15d | 2013-05-15 | 2013-06-04 |  | 10d |  |  |
| 26 | 4.1 | 小组集成测试 | 5d | 2013-05-15 | 2013-05-21 |  | 10d | 0d | finish no earlier than 2013-05-21 |
| 27 | 4.2 | 项目集成测试 | 10d | 2013-05-22 | 2013-06-04 | 26 | 10d |  | start no earlier than 2013-05-22 |
| 28 | 5 | **EMarBox对接** | 10d | 2013-06-05 | 2013-06-18 |  | 0d |  |  |
| 29 | 5.1 | RTB、DMP、DSP小组数据梳理 | 2d | 2013-06-05 | 2013-06-06 |  | 0d |  | finish no earlier than 2013-06-06 |
| 30 | 5.2 | 对接模块代码开发 | 3d | 2013-06-07 | 2013-06-11 | 29 | 0d |  | start no earlier than 2013-06-07 |
| 31 | 5.3 | 对接模块单元测试 | 1d | 2013-06-12 | 2013-06-12 | 30 | 0d |  |  |
| 32 | 5.4 | 对接集成测试 | 3d | 2013-06-13 | 2013-06-17 | 31 | 0d |  | start no earlier than 2013-06-13 |
| 33 | 5.5 | 上线部署 | 1d | 2013-06-18 | 2013-06-18 | 32 | 0d |  |  |
